| seq | activity | responsible | start | finish | depends_on | critical_path | kpi | implementing_agent | status | financial_input | financial_input_type | output | complexity |
| --- | --- | --- | --- | --- | --- | --- | --- | --- | --- | --- | --- | --- | --- |
| 1 | Develop and manage Project Risk Register | Asaf | 01-Sept-2026 | 30-Jul-2028 | None | Y | Risk register reviewed weekly; high risks have owners, mitigations and escalation actions | Manual | In Progress | N | N/A | Live Project Risk Register | Medium |
| 2 | Complete stakeholder identification, mapping and engagement plan | Asaf, Ayanda | 01-Sept-2026 | 07-Sept-2026 | 1 | Y | Priority stakeholders classified with engagement requirements | Manual | Planned | N | N/A | Stakeholder Register & Engagement Map | Medium |
| 3 | Inventory existing industry and stakeholder relationships | Asaf, Ayanda | 07-Sept-2026 | 10-Sept-2026 | 2, 12 | Y | Relationships classified by status, strategic value and ownership | Manual | Planned | N | N/A | Relationship Register | Medium |
| 4 | Identify and prioritise strategic partners | Asaf, Sinqobile, Nkululeko | 14-Sept-2026 | 21-Sept-2026 | 3 | Y | Priority partner pipeline agreed against strategic criteria | Manual / AI | Planned | N | N/A | Partner Prioritisation Matrix | High |
| 5 | Engage priority partners and define partnership opportunities | Asaf | 17-Sept-2026 | 30-Sept-2026 | 4 | Y | Priority engagements initiated/completed; opportunities and actions recorded | Phone / Email / Meetings | Planned | Y | Meetings/travel where required | Partner Engagement Tracker | High |
| 6 | Prepare and route priority MOUs for institutional/legal approval | Asaf | 17-Sept-2026 | 09-Oct-2026 | 5 | Y | Priority MOU drafts prepared, reviewed and routed to authorised approvers | Manual / Email | Planned | Y | Legal/approval support if required | MOU Approval Pack | High |
| 7 | Progress signing of priority MOUs and maintain MOU status register | Sinqobile, Nkululeko, Ayanda, Siphelele, Asaf | 01-Sept-2026 | 30-Jul-2028 | 6 | Y | Signed MOUs evidenced; outstanding MOUs have owner, status and next action | Manual / Meetings | Planned | Y | Engagement/travel if required | Signed MOUs / MOU Status Register | High |
| 8 | Assess partnership-development capability | Asaf | 01-Sept-2026 | 30-Jul-2028 | 3, 4 | Y | Current partnership processes, ownership, data and tracking capability assessed | Manual | Planned | N | N/A | Partnership Capability Baseline | Medium |
| 9 | Complete and submit Phase 1 Report / Phase 2 readiness gate | Asaf, Sinqobile, Nkululeko | 14-Sept-2026 | 21-Sept-2026 | 1, 2, 3, 4, 5, 6, 7, 8, 10, 11, 12 | Y | Phase 1 outputs consolidated; outstanding issues recorded; Phase 2 authorised | Manual | Planned | N | N/A | Approved Phase 1 Report | High |
| 10 | Finalise campus assessment toolkit, interview guides and evidence checklist | Asaf, Ayanda | 25-Sept-2026 | 30-Sept-2026 | 12 | Y | Standardised toolkit tested and issued for all campuses | Manual | Planned | N | N/A | Campus Assessment Toolkit | Medium |
| 11 | Confirm final campus list, sequence, teams, access and logistics | Asaf, Ayanda | 28-Sept-2026 | 02-Oct-2026 | 10 | Y | Every confirmed campus allocated an assessment week, team and logistics plan | Manual | Planned | Y | Travel / accommodation planning | Locked Campus Master Schedule | High |
| 12 | Finalise Status Quo assessment framework and scoring methodology | Asaf, Ayanda | 15-Sept-2026 | 23-Sept-2026 | 1, 2 | Y | Ten dimensions, evidence requirements and scoring methodology approved | Manual | Planned | N | N/A | Approved Assessment Framework | High |
| 13 | Campus Assessment 1,2 – campus name to be confirmed | Asaf | 05-Oct-2026 | 09-Oct-2026 | 9 | Y | Campus assessed against all ten dimensions; evidence gaps/findings recorded | Manual / Site / Interview | Planned | Y | Travel / accommodation / local transport | Campus 1 Status Quo Pack | High |
| 14 | Campus Assessment 3,4 – campus name to be confirmed | Asaf | 12-Oct-2026 | 16-Oct-2026 | 13 | Y | Full one-calendar-week assessment cycle completed | Manual / Site / Interview | Planned | Y | Travel / accommodation / local transport | Campus 2 Status Quo Pack | High |
| 15 | Campus Assessment 5,6 – campus name to be confirmed | Asaf | 19-Oct-2026 | 23-Oct-2026 | 14 | Y | Full one-calendar-week assessment cycle completed | Manual / Site / Interview | Planned | Y | Travel / accommodation / local transport | Campus 3 Status Quo Pack | High |
| 16 | Campus Assessment 7,8 – campus name to be confirmed | Asaf | 26-Oct-2026 | 30-Oct-2026 | 15 | Y | Full one-calendar-week assessment cycle completed | Manual / Site / Interview | Planned | Y | Travel / accommodation / local transport | Campus 4 Status Quo Pack | High |
| 17 | Additional campus assessment(s), if required by confirmed campus count | Asaf | 02-Nov-2026 | 06-Nov-2026 | 9, 11, 13, 14, 15, 16 | Y* | Each additional campus receives the same assessment standard and controlled week | Manual / Site / Interview | TBC | Y | Travel / accommodation / local transport | Additional Campus Status Quo Pack(s) | High |
| 18 | Validate partner pipeline and MOU status through campus evidence | Asaf | 05-Oct-2026 | 06-Nov-2026 | 7, 13, 14, 15, 16, 17 | Y | Partner/MOU records triangulated against campus and institutional evidence | Manual | Planned | N | N/A | Updated Partner / MOU Tracker | Medium |
| 19 | Consolidate campus evidence and conduct data/scoring QA | Asaf | 09-Nov-2026 | 13-Nov-2026 | 13, 14, 15, 16, 17, 18 | Y | Evidence consolidated; gaps logged; scoring consistently applied and QA completed | Manual / Data | Planned | N | N/A | Validated Status Quo Dataset | High |
| 20 | Conduct cross-campus institutional analysis | Asaf | 12-Nov-2026 | 20-Nov-2026 | 19 | Y | Institution-wide themes, variations and campus-specific issues identified | Manual / Data | Planned | N | N/A | Institutional Status Quo Analysis | High |
| 21 | Complete strengths, gaps, risks, opportunities and capacity-constraint analysis | Asaf | 16-Nov-2026 | 24-Nov-2026 | 19, 20 | Y | Consolidated analytical matrix completed and evidence referenced | Manual / Data | Planned | N | N/A | Gap / Risk / Opportunity / Capacity Matrix | High |
| 22 | Consolidate partnership/MOU findings into institutional Status Quo | Asaf | 16-Nov-2026 | 24-Nov-2026 | 18, 20 | Y | Partnership baseline and MOU position incorporated into findings | Manual | Planned | N | N/A | Partnership / MOU Baseline | Medium |
| 23 | Prepare Draft Stage 2 Status Quo Assessment Report | Asaf | 23-Nov-2026 | 30-Nov-2026 | 20, 21, 22 | Y | Complete evidence-based draft produced against approved structure | Manual | Planned | N | N/A | Draft Stage 2 Status Quo Report | High |
| 24 | Validate findings with Project Leadership and relevant stakeholders | Asaf, Nkululeko, Sinqobile | 01-Dec-2026 | 04-Dec-2026 | 23 | Y | Findings fact-checked; comments recorded; disagreements resolved or documented | Meetings / Manual | Planned | Y | Meeting/workshop costs if required | Validated Findings & Feedback Register | Medium |
| 25 | Incorporate approved comments and complete final report QA | Asaf | 04-Dec-2026 | 10-Dec-2026 | 24 | Y | Approved comments incorporated; evidence, scoring and conclusions quality assured | Manual | Planned | N | N/A | Final QA Report Version | Medium |
| 26 | Final management review, approval and submission of Stage 2 Status Quo Report | Asaf, Sinqobile, Nkululeko | 10-Dec-2026 | 11-Dec-2026 | 25 | Y | Final report approved and formally submitted by 11 December | Manual | Planned | N | N/A | Final Stage 2 Status Quo Assessment Report | High |
| 27 | Complete Stage 2 close-out and update Project Portal records | Asaf, Ayanda | 11-Dec-2026 | 11-Dec-2026 | 26 | Y | Final deliverables/evidence uploaded; activities closed; outstanding actions recorded | Manual / Portal | Planned | N | N/A | Stage 2 Close-out / Portal Record | Low |
